# Toyota - Mid size project - Template

Schedule from MS Project, 2001-01-01 to 2001-02-16, A marks actual dates.
CTS

## Calendars

- Standard: Mon-Fri 08:00-12:00, 13:00-17:00; Sat-Sun off.

## Resources

| Resource |
| --- |
| Business Analyst |
| Business Stakeholders |
| Enterprise Architect |
| Tester |
| Operations Team |
| EISP Security Analyst |
| Project Sponsor |
| Solution Architect |
| Developer |
| Infrastructure Designer |
| ICE Architect |

## Schedule

| ID | WBS | Task | Type | Duration | Start | Finish | Predecessors | Complete | Remaining | Total slack | Free slack | Text30 | Text1 | TMS Deliverables |
| --- | --- | --- | --- | --- | --- | --- | --- | --- | --- | --- | --- | --- | --- | --- |
| 1 | 1 | **Project Name** |  | 36d | 2001-01-01 A | 2001-02-16 |  | 12% | 31.61d |  |  | 91833;P;PT |  |  |
| 2 | 1.1 | **Inception Phase** |  | 11d? | 2001-01-01 | 2001-01-15 |  |  |  | 13d |  | 91833;P;PT | UnAssigned |  |
| 3 | 1.1.1 | **Definition** |  | 7d? | 2001-01-01 | 2001-01-09 |  |  |  | 13d |  | 91833;P;PT |  |  |
| 4 | 1.1.1.1 | **Requirements & Estimation** |  | 3d? | 2001-01-01 | 2001-01-03 |  |  |  | 13d |  | 91833;P;PT |  |  |
| 5 | 1.1.1.1.1 | Identify Single Owner SME |  | 1d? | 2001-01-01 | 2001-01-01 |  |  |  | 13d | 0d | 91833;P;PT |  |  |
| 6 | 1.1.1.1.2 | Understand Functional and Non Functional Requirements |  | 1d? | 2001-01-01 | 2001-01-01 |  |  |  | 13d | 0d | 91833;P;PT |  |  |
| 7 | 1.1.1.1.3 | Document & clarify the questions(if any) on the requirements |  | 1d? | 2001-01-01 | 2001-01-01 | 5SS, 6SS |  |  | 13d | 0d | 91833;P;PT |  | Clarification Tracker |
| 8 | 1.1.1.1.4 | Prepare ROM Estimates |  | 1d? | 2001-01-01 | 2001-01-01 | 5SS, 7SS, 6SS |  |  | 34d |  | 91833;P;PT |  | ROM Estimates |
| 9 | 1.1.1.1.5 | Perform Detailed Effort & cost Estimation which includes Contigency effort |  | 1d? | 2001-01-01 | 2001-01-01 | 5SS, 7SS, 6SS |  |  | 13d | 0d | 91833;P;PT |  | Estimates & Pricing |
| 10 | 1.1.1.1.6 | Prepare CPR & gain CTS internal approval |  | 1d? | 2001-01-02 | 2001-01-02 | 9 |  |  | 13d | 0d |  |  |  |
| 11 | 1.1.1.1.7 | Get TMS approval - Estimates & budget |  | 1d? | 2001-01-03 | 2001-01-03 | 9, 10 |  |  | 13d | 0d |  |  |  |
| 12 | 1.1.1.2 | **Prepare Contract or SOW** |  | 4d? | 2001-01-04 | 2001-01-09 |  |  |  | 13d |  | 91833;P;PT |  |  |
| 13 | 1.1.1.2.1 | Prepare Contract which includes assumption and dependencies |  | 1d? | 2001-01-04 | 2001-01-04 | 10, 11 |  |  | 13d | 0d | 91833;P;PT |  |  |
| 14 | 1.1.1.2.2 | Review Contract |  | 1d? | 2001-01-05 | 2001-01-05 | 13 |  |  | 13d | 0d | 91833;P;PT |  |  |
| 15 | 1.1.1.2.3 | Rework Contract |  | 1d? | 2001-01-08 | 2001-01-08 | 14 |  |  | 13d | 0d | 91833;P;PT |  | SOW/Schedule contract |
| 16 | 1.1.1.2.4 | Signoff Contract |  | 1d? | 2001-01-09 | 2001-01-09 | 15 |  |  | 13d | 0d | 91833;P;PT |  |  |
| 17 | 1.1.1.3 | **Project Setup** |  | 4d? | 2001-01-01 | 2001-01-04 |  |  |  | 31d |  | 91833;P;PT |  |  |
| 18 | 1.1.1.3.1 | Create ESA project |  | 1d? | 2001-01-04 | 2001-01-04 | 11 |  |  | 30d | 0d |  |  |  |
| 19 | 1.1.1.3.2 | Provide SO/Resource forecast |  | 1d? | 2001-01-01 | 2001-01-01 |  |  |  | 32d | 0d |  |  |  |
| 20 | 1.1.1.3.3 | Amend Contract to ESA |  | 1d? | 2001-01-01 | 2001-01-01 |  |  |  | 34d |  |  |  |  |
| 21 | 1.1.1.3.4 | Provide Revenue/CP forecast |  | 1d? | 2001-01-01 | 2001-01-01 |  |  |  | 34d |  |  |  |  |
| 22 | 1.1.1.4 | **Project Kickoff** |  | 7d? | 2001-01-01 | 2001-01-09 |  |  |  | 13d | 0d | 91833;P;PT |  |  |
| 23 | 1.1.1.4.1 | **Identify project stakeholders** |  | 6d? | 2001-01-01 | 2001-01-08 |  |  |  | 13d | 0d |  |  |  |
| 24 | 1.1.1.4.1.1 | Horizontal stakeholders - CBC/Testing/CI/Performance |  | 1d? | 2001-01-08 | 2001-01-08 | 14 |  |  | 13d |  |  |  |  |
| 25 | 1.1.1.4.1.2 | DAG stakeholders |  | 1d? | 2001-01-08 | 2001-01-08 | 14 |  |  | 13d |  |  |  |  |
| 26 | 1.1.1.4.1.3 | TMS - Business, EA, Other Supplier stakeholders |  | 1d? | 2001-01-08 | 2001-01-08 | 14 |  |  | 13d |  |  |  |  |
| 27 | 1.1.1.4.1.4 | Other interfacing application/project stakeholders |  | 1d? | 2001-01-08 | 2001-01-08 | 14 |  |  | 13d |  |  |  |  |
| 28 | 1.1.1.4.1.5 | Create RASCI |  | 1d? | 2001-01-01 | 2001-01-01 |  |  |  | 18d |  |  |  | RASCI |
| 29 | 1.1.1.4.2 | Conduct Project Kickoff |  | 1d? | 2001-01-09 | 2001-01-09 | 23 |  |  | 13d | 0d | 91833;P;PT |  |  |
| 30 | 1.1.1.5 | Completion of Project Kickoff | milestone | 0d | 2001-01-01 | 2001-01-01 |  |  |  | 35d |  | 91833;P;PT | UnAssigned | Project Kickoff deck |

| ID | WBS | Task | Duration | Start | Finish | Predecessors | Total slack | Free slack | Text30 | TMS Deliverables | Text1 |
| --- | --- | --- | --- | --- | --- | --- | --- | --- | --- | --- | --- |
| 31 | 1.1.2 | **Project Planning** | 11d? | 2001-01-01 | 2001-01-15 |  | 24d |  | 91833;P;PT |  |  |
| 32 | 1.1.2.1 | **Integrated Project Plan Development** | 10d? | 2001-01-01 | 2001-01-12 |  | 25d |  | 91833;P;PT |  |  |
| 33 | 1.1.2.1.1 | Schedule WBS sessions | 1d? | 2001-01-01 | 2001-01-01 |  | 34d |  |  |  |  |
| 34 | 1.1.2.1.2 | Create WBS document | 1d? | 2001-01-01 | 2001-01-01 |  | 34d |  |  | WBS doc |  |
| 35 | 1.1.2.1.3 | Develop Detailed Schedule | 1d? | 2001-01-10 | 2001-01-10 | 48, 22 | 24d | 0d | 91833;P;PT | MPP |  |
| 36 | 1.1.2.1.4 | Develop Staffing Plan and Allocate Resource | 1d? | 2001-01-11 | 2001-01-11 | 35 | 24d | 0d | 91833;P;PT | MPP |  |
| 37 | 1.1.2.1.5 | Develop Metrics Plan for Application Development (C20/Mainspring) | 1d? | 2001-01-01 | 2001-01-01 |  | 31d | 0d | 91833;P;PT |  |  |
| 38 | 1.1.2.1.6 | Define productivity details based on number of test cases | 1d? | 2001-01-01 | 2001-01-01 |  | 33d | 3d | 91833;P;PT |  |  |
| 39 | 1.1.2.1.7 | Develop Defect Prevention Plan for Application Development | 1d? | 2001-01-02 | 2001-01-02 | 37 | 32d | 2d | 91833;P;PT |  |  |
| 40 | 1.1.2.1.8 | Establish communications management | 1d? | 2001-01-12 | 2001-01-12 | 36 | 24d | 0d |  |  |  |
| 41 | 1.1.2.1.9 | Publish Project Org structure | 1d? | 2001-01-12 | 2001-01-12 | 36 | 25d |  |  |  |  |
| 42 | 1.1.2.1.10 | Define project repository & share point portal | 1d? | 2001-01-05 | 2001-01-05 | 18 | 30d |  |  |  |  |
| 43 | 1.1.2.1.11 | Determine SOX complaince requirements | 1d? | 2001-01-12 | 2001-01-12 | 36 | 25d |  |  |  |  |
| 44 | 1.1.2.2 | **Integrated Project Plan Review** | 1d? | 2001-01-15 | 2001-01-15 |  | 24d |  | 91833;P;PT |  |  |
| 45 | 1.1.2.2.1 | Review & approve Software Project Plan with TMS | 1d? | 2001-01-15 | 2001-01-15 | 36, 37, 39, 40, 38 | 24d |  | 91833;P;PT | SPP |  |
| 46 | 1.1.2.3 | **C20 / Mainspring Setup** | 2d? | 2001-01-01 | 2001-01-02 |  | 29d |  | 91833;P;PT |  | UnAssigned |
| 47 | 1.1.2.3.1 | Define Process package, Functional and Release Model | 1d? | 2001-01-01 | 2001-01-01 |  | 29d | 0d | 91833;P;PT |  |  |
| 48 | 1.1.2.3.2 | Create Work Management Plan | 1d? | 2001-01-02 | 2001-01-02 | 47 | 29d | 0d | 91833;P;PT |  |  |
| 49 | 1.1.2.4 | **Team On boarding** | 2d? | 2001-01-02 | 2001-01-03 | 19 | 32d |  | 91833;P;PT |  | UnAssigned |
| 50 | 1.1.2.4.1 | Identify Seats / Workstations | 1d? | 2001-01-02 | 2001-01-02 |  | 33d |  | 91833;P;PT |  | UnAssigned |
| 51 | 1.1.2.4.2 | On boarding to TMS - VLAN Id, Email Id | 1d? | 2001-01-02 | 2001-01-02 |  | 32d | 0d | 91833;P;PT |  | UnAssigned |
| 52 | 1.1.2.4.3 | VM Readiness - Creation, Software installation | 1d? | 2001-01-02 | 2001-01-02 |  | 33d |  | 91833;P;PT |  | UnAssigned |
| 53 | 1.1.2.4.4 | Access to necessary environments | 1d? | 2001-01-03 | 2001-01-03 | 51 | 32d |  | 91833;P;PT |  | UnAssigned |
| 54 | 1.1.2.5 | **Knowledge Transition** | 1d? | 2001-01-01 | 2001-01-01 |  | 34d |  | 91833;P;PT |  | UnAssigned |
| 55 | 1.1.2.5.1 | Overview of Toyota, Vertical & Application | 1d? | 2001-01-01 | 2001-01-01 |  | 34d |  | 91833;P;PT |  | UnAssigned |
| 56 | 1.1.2.5.2 | Overview of Toyota Process, Deliverables, Templates, CQ, Environment | 1d? | 2001-01-01 | 2001-01-01 |  | 34d |  | 91833;P;PT |  | UnAssigned |
| 57 | 1.1.2.5.3 | Knowledge Transition between Development team / Testing team & Functional team | 1d? | 2001-01-01 | 2001-01-01 |  | 34d |  | 91833;P;PT |  | UnAssigned |
| 58 | 1.1.2.5.4 | Project Specific KT | 1d? | 2001-01-01 | 2001-01-01 |  | 34d |  | 91833;P;PT |  | UnAssigned |

Notes:
- 56: Toyota Process to cover TESS, Veracode, Sortsite, CQ tracking, SOX complaince as well / Deliverables committed in SOW/Contract to be clearly called out

| ID | WBS | Task | Type | Duration | Start | Finish | Predecessors | Complete | Remaining | Total slack | Free slack | Text1 | Text30 | TMS Deliverables |
| --- | --- | --- | --- | --- | --- | --- | --- | --- | --- | --- | --- | --- | --- | --- |
| 59 | 1.1.2.6 | **Environment Readiness** |  | 1d? | 2001-01-01 | 2001-01-01 |  |  |  | 34d |  | UnAssigned | 91833;P;PT |  |
| 60 | 1.1.2.6.1 | Setup and Access to BitBucket |  | 1d? | 2001-01-01 | 2001-01-01 |  |  |  | 34d |  | UnAssigned | 91833;P;PT |  |
| 61 | 1.1.2.6.2 | Setup and Access to Dev environment |  | 1d? | 2001-01-01 | 2001-01-01 |  |  |  | 34d |  | UnAssigned | 91833;P;PT |  |
| 62 | 1.1.2.6.3 | Setup and Access to Test environment |  | 1d? | 2001-01-01 | 2001-01-01 |  |  |  | 34d |  | UnAssigned | 91833;P;PT |  |
| 63 | 1.1.2.6.4 | Setup and Access to QA environment |  | 1d? | 2001-01-01 | 2001-01-01 |  |  |  | 34d |  | UnAssigned | 91833;P;PT |  |
| 64 | 1.1.2.6.5 | Setup and Access to UAT environment |  | 1d? | 2001-01-01 | 2001-01-01 |  |  |  | 34d |  | UnAssigned | 91833;P;PT |  |
| 65 | 1.1.2.6.6 | Setup and Access to Pilot / Prod environment |  | 1d? | 2001-01-01 | 2001-01-01 |  |  |  | 34d |  | UnAssigned | 91833;P;PT |  |
| 66 | 1.1.2.6.7 | Setup and Access to Other Servers - Build, TESS, Sortsite, Veracode |  | 1d? | 2001-01-01 | 2001-01-01 |  |  |  | 34d |  | UnAssigned | 91833;P;PT |  |
| 67 | 1.1.2.7 | **Conduct Startup Audit** |  | 8d? | 2001-01-01 | 2001-01-10 |  |  |  | 27d |  |  | 91833;P;PT |  |
| 68 | 1.1.2.7.1 | Conduct Startup Audit - DAG |  | 1d? | 2001-01-10 | 2001-01-10 | 29SS, 280SS |  |  | 26d | 0d |  | 91833;P;PT |  |
| 69 | 1.1.2.7.2 | Conduct Startup Audit - TMS |  | 1d? | 2001-01-01 | 2001-01-01 |  |  |  | 34d |  |  | 91833;P;PT |  |
| 70 | 1.1.2.8 | **Phase End Review** |  | 1d? | 2001-01-01 | 2001-01-01 |  |  |  | 34d |  |  |  |  |
| 71 | 1.1.2.8.1 | Obtain approval from relevant stakeholder groups (EA/ES/Ops/SOX/DR, etc.) |  | 1d? | 2001-01-01 | 2001-01-01 |  |  |  | 34d |  |  |  | Phase end checklist activities |
| 72 | 1.1.2.8.2 | TMS phase end review and sign off |  | 1d? | 2001-01-01 | 2001-01-01 |  |  |  | 34d |  |  |  | Phase End Checklist Sign off |
| 73 | 1.1.2.9 | Completion of Inception Phase | milestone | 0d | 2001-01-01 | 2001-01-01 |  |  |  | 35d |  |  |  |  |
| 74 | 1.2 | **Elaboration Phase** |  | 19d? | 2001-01-01 A | 2001-01-25 |  | 48% | 9.87d? | 16d |  | UnAssigned | 91833;P;PT |  |
| 75 | 1.2.1 | **REQUIREMENTS DEFINITION** |  | 7d? | 2001-01-01 A | 2001-01-09 |  | 84% | 1.11d? | 28d |  | 2.2 |  |  |
| 76 | 1.2.1.1 | **Module 1** |  | 7d? | 2001-01-01 A | 2001-01-09 |  | 84% | 1.11d? | 28d |  | UnAssigned |  |  |
| 77 | 1.2.1.1.1 | **AS-IS BUSINESS PROCESS MODEL** |  | 1d | 2001-01-01 A | 2001-01-01 A |  | 100% |  |  |  | 2.2.1 |  |  |
| 78 | 1.2.1.1.1.1 | Create the As-is Business Model |  | 1d | 2001-01-01 A | 2001-01-01 A |  | 100% |  |  |  | 2.2.1.1 |  |  |
| 79 | 1.2.1.1.1.2 | Obtain TMS approval on the As-is Business Model |  | 1d | 2001-01-01 A | 2001-01-01 A |  | 100% |  |  |  | 2.2.1.2 |  |  |
| 80 | 1.2.1.1.1.3 | As-Is Business Process Model Complete | milestone | 0d | 2001-01-01 A | 2001-01-01 A | 78, 79 | 100% |  |  |  | 2.2.1.3 |  | As-Is BPM |
| 81 | 1.2.1.1.2 | **TO-BE BUSINESS PROCESS MODEL** |  | 2d | 2001-01-02 A | 2001-01-03 A |  | 100% |  |  |  |  |  |  |
| 82 | 1.2.1.1.2.1 | Create the To-be Business Model |  | 1d | 2001-01-02 A | 2001-01-02 A | 80 | 100% |  |  |  |  |  |  |
| 83 | 1.2.1.1.2.2 | Obtain TMS approval on the To-be Business Model |  | 1d | 2001-01-03 A | 2001-01-03 A | 82 | 100% |  |  |  |  |  |  |
| 84 | 1.2.1.1.2.3 | To-be Business Process Model Complete | milestone | 0d | 2001-01-03 A | 2001-01-03 A | 83 | 100% |  |  |  |  |  | To-Be BPM |

Notes:
- 61: Environment includes - App/Web servers, DB Servers, Cloud access, Monitoring tools (Foglight), Configuratio n tools etc
- 75: Text3: [34]UID=AJ6U:<`,)\```8<*%O$`!```?P```0[16]PUN=P00004323005[7]TUID=91[35]PUID=AJA[7M`;%_```0/]G"$`!```?P```0
- 77: Text3: [34]UID=AJX;>M`<%\```8<*%O$`!```?P```0[16]PUN=P00004323005[7]TUID=92[35]PUID=AJA[7M`;%_```0/]G"$`!```?P```0
- 78: Text3: [34]UID=AJ^Q[M`<!\```8<*%O$`!```?P```0[16]PUN=P00004323005[7]TUID=93[35]PUID=AJA[7M`;%_```0/]G"$`!```?P```0
- 79: Text3: [34]UID=AJ@Y3E`;]\```8<*%O$`!```?P```0[16]PUN=P00004323005[7]TUID=94[35]PUID=AJA[7M`;%_```0/]G"$`!```?P```0
- 80: Text3: [34]UID=AJ=+VB`;Y\```8<*%O$`!```?P```0[16]PUN=P00004323005[7]TUID=95[35]PUID=AJA[7M`;%_```0/]G"$`!```?P```0

| ID | WBS | Task | Type | Duration | Start | Finish | Predecessors | Complete | Remaining | Total slack | Free slack | Text1 | TMS Deliverables |
| --- | --- | --- | --- | --- | --- | --- | --- | --- | --- | --- | --- | --- | --- |
| 85 | 1.2.1.1.3 | **USE CASES** |  | 2d | 2001-01-04 A | 2001-01-05 |  | 50% | 1d | 30d |  | 2.3.1 |  |
| 86 | 1.2.1.1.3.1 | Create Use Cases and Storyboards |  | 1d | 2001-01-04 A | 2001-01-04 A | 80, 84 | 100% |  |  |  |  |  |
| 87 | 1.2.1.1.3.2 | Obtain TMS approval for the Use Cases and Storyboards |  | 1d | 2001-01-05 | 2001-01-05 | 86 |  |  | 28d | 0d | 2.3.1.1 |  |
| 88 | 1.2.1.1.3.3 | Use Cases and Storyboards Complete | milestone | 0d | 2001-01-05 | 2001-01-05 | 87 |  |  | 30d |  |  | To-Be Use Cases |
| 89 | 1.2.1.1.4 | **Develop UI mock ups** |  | 1d? | 2001-01-01 A | 2001-01-01 A |  | 100% |  |  |  |  |  |
| 90 | 1.2.1.1.4.1 | Create UI wireframes |  | 1d? | 2001-01-01 A | 2001-01-01 A |  | 100% |  |  |  |  |  |
| 91 | 1.2.1.1.4.2 | Review wireframes with Business |  | 1d? | 2001-01-01 A | 2001-01-01 A |  | 100% |  |  |  |  |  |
| 92 | 1.2.1.1.4.3 | Rework UI wireframes |  | 1d? | 2001-01-01 A | 2001-01-01 A |  | 100% |  |  |  |  |  |
| 93 | 1.2.1.1.4.4 | Sign off UI wireframes |  | 1d? | 2001-01-01 A | 2001-01-01 A |  | 100% |  |  |  |  |  |
| 94 | 1.2.1.1.4.5 | Complete UI mock ups | milestone | 0d | 2001-01-01 A | 2001-01-01 A |  | 100% |  |  |  |  | UI wireframes |
| 95 | 1.2.1.1.5 | **BUSINESS REQUIREMENTS DOCUMENT** |  | 6d | 2001-01-01 A | 2001-01-08 |  | 50% | 3d | 28d |  | 2.3.2 |  |
| 96 | 1.2.1.1.5.1 | Create Business Requirements Document |  | 1d | 2001-01-08 | 2001-01-08 | 87 |  |  | 28d | 0d | 2.3.2.1 |  |
| 97 | 1.2.1.1.5.2 | Obtain approval for the Business Requirements Document |  | 1d | 2001-01-01 A | 2001-01-01 A |  | 100% |  |  |  |  |  |
| 98 | 1.2.1.1.5.3 | Business Requirements Document Complete | milestone | 0d | 2001-01-01 A | 2001-01-01 A |  | 100% |  |  |  |  | BRD |
| 99 | 1.2.1.1.6 | **Develop UI Prototypes** |  | 1d? | 2001-01-01 A | 2001-01-01 A |  | 100% |  |  |  |  |  |
| 100 | 1.2.1.1.6.1 | Develop Visual Design for the mock ups |  | 1d? | 2001-01-01 A | 2001-01-01 A |  | 100% |  |  |  |  |  |
| 101 | 1.2.1.1.6.2 | Develop clickable html prototypes |  | 1d? | 2001-01-01 A | 2001-01-01 A |  | 100% |  |  |  |  |  |
| 102 | 1.2.1.1.6.3 | Review UI prototypes with Business |  | 1d? | 2001-01-01 A | 2001-01-01 A |  | 100% |  |  |  |  |  |
| 103 | 1.2.1.1.6.4 | Sign off on UI prototypes |  | 1d? | 2001-01-01 A | 2001-01-01 A |  | 100% |  |  |  |  |  |
| 104 | 1.2.1.1.6.5 | Complete UI Prototypes | milestone | 0d | 2001-01-01 A | 2001-01-01 A |  | 100% |  |  |  |  | HTML mockups |
| 105 | 1.2.1.1.7 | **SUPPLEMENTARY SPECIFICATIONS** |  | 1d | 2001-01-01 A | 2001-01-01 A |  | 100% |  |  |  |  |  |
| 106 | 1.2.1.1.7.1 | Create Supplementary Specifications |  | 1d | 2001-01-01 A | 2001-01-01 A |  | 100% |  |  |  |  |  |
| 107 | 1.2.1.1.7.2 | Obtain approval for the Supplementary Specifications |  | 1d | 2001-01-01 A | 2001-01-01 A |  | 100% |  |  |  |  |  |
| 108 | 1.2.1.1.7.3 | Supplementary Specifications Complete | milestone | 0d | 2001-01-01 A | 2001-01-01 A |  | 100% |  |  |  |  | NFR/Supplementary specs |

Notes:
- 85: Text3: [34]UID=AJ(LLB`;Q\```8<*%O$`!```?P```0[16]PUN=P00004323005[7]TUID=97[35]PUID=AJA[7M`;%_```0/]G"$`!```?P```0
- 87: Text3: [34]UID=AJVSDC`;M\```8<*%O$`!```?P```0[16]PUN=P00004323005[7]TUID=98[35]PUID=AJA[7M`;%_```0/]G"$`!```?P```0
- 95: Text3: [34]UID=AJ@,>*`;I\```8<*%O$`!```?P```0[16]PUN=P00004323005[7]TUID=99[35]PUID=AJA[7M`;%_```0/]G"$`!```?P```0
- 96: Text3: [34]UID=AJTZ2%`+E\```8<*%O$`!```?P```0[16]PUN=P00004323005[8]TUID=100[35]PUID=AJA[7M`;%_```0/]G"$`!```?P```0

| ID | WBS | Task | Type | Duration | Start | Finish | Predecessors | Complete | Remaining | Total slack | Free slack | Text1 | TMS Deliverables | Text30 |
| --- | --- | --- | --- | --- | --- | --- | --- | --- | --- | --- | --- | --- | --- | --- |
| 109 | 1.2.1.1.8 | **REQUIREMENTS TRACEABILITY MATRIX** |  | 1d | 2001-01-09 | 2001-01-09 |  |  |  | 28d |  | 2.4 |  |  |
| 110 | 1.2.1.1.8.1 | Create Requirements Traceability Matrix |  | 1d | 2001-01-09 | 2001-01-09 | 87, 96 |  |  | 28d | 0d | 2.4.1 |  |  |
| 111 | 1.2.1.1.8.2 | Requirement Traceability Matrix Complete for Inception | milestone | 0d | 2001-01-09 | 2001-01-09 | 110 |  |  | 28d |  | 2.4.2 | RTM - Inception phase |  |
| 112 | 1.2.2 | **Requirements Analysis** |  | 11d? | 2001-01-01 A | 2001-01-15 |  | 50% | 5.5d? | 13d |  |  |  | 91833;P;PT |
| 113 | 1.2.2.1 | **Analyse Requirements** |  | 4d? | 2001-01-10 | 2001-01-15 |  |  |  | 13d | 0d |  |  | 91833;P;PT |
| 114 | 1.2.2.1.1 | Prepare understanding document |  | 1d? | 2001-01-10 | 2001-01-10 | 16, 29 |  |  | 13d | 0d |  |  | 91833;P;PT |
| 115 | 1.2.2.1.2 | Requirements Understanding sessions |  | 1d? | 2001-01-11 | 2001-01-11 | 114 |  |  | 13d | 0d |  |  | 91833;P;PT |
| 116 | 1.2.2.1.3 | Review Analysis Document |  | 1d? | 2001-01-12 | 2001-01-12 | 115 |  |  | 13d | 0d |  |  | 91833;P;PT |
| 117 | 1.2.2.1.4 | Rework Analysis Document |  | 1d? | 2001-01-15 | 2001-01-15 | 116 |  |  | 13d |  |  | Understanding document | 91833;P;PT |
| 118 | 1.2.2.2 | **Prepare Test Strategy/Plan** |  | 4d? | 2001-01-01 A | 2001-01-04 A |  | 100% |  |  |  |  |  | 91833;P;PT |
| 119 | 1.2.2.2.1 | Prepare Test Strategy/Plan |  | 1d? | 2001-01-01 A | 2001-01-01 A |  | 100% |  |  |  |  |  | 91833;P;PT |
| 120 | 1.2.2.2.2 | Review Test Strategy/Plan |  | 1d? | 2001-01-02 A | 2001-01-02 A | 119 | 100% |  |  |  |  |  | 91833;P;PT |
| 121 | 1.2.2.2.3 | Rework Test Strategy/Plan |  | 1d? | 2001-01-03 A | 2001-01-03 A | 120 | 100% |  |  |  |  |  | 91833;P;PT |
| 122 | 1.2.2.2.4 | Signoff Test Strategy/Plan |  | 1d? | 2001-01-04 A | 2001-01-04 A | 121 | 100% |  |  |  |  |  | 91833;P;PT |
| 123 | 1.2.2.2.5 | completion of Test plan | milestone | 0d | 2001-01-01 A | 2001-01-01 A |  | 100% |  |  |  | UnAssigned | Test Strategy/Plan | 91833;P;PT |
| 124 | 1.2.3 | **Design** |  | 19d? | 2001-01-01 A | 2001-01-25 |  | 17% | 15.7d? | 16d |  |  |  | 91833;P;PT |
| 125 | 1.2.3.1 | **SOLUTION OPTION SELECTION** |  | 3d | 2001-01-16 | 2001-01-18 | 113 |  |  | 13d | 0d |  |  |  |
| 126 | 1.2.3.1.1 | Evaluate Solution Options |  | 1d | 2001-01-16 | 2001-01-16 |  |  |  | 13d | 0d |  |  |  |
| 127 | 1.2.3.1.2 | Select Solution Options & Create Highlevel Solution Diagram |  | 1d | 2001-01-17 | 2001-01-17 | 126 |  |  | 13d | 0d |  |  |  |
| 128 | 1.2.3.1.3 | Review & Signoff with Enterprise Architect Team |  | 1d | 2001-01-18 | 2001-01-18 | 127 |  |  | 13d | 0d |  |  |  |
| 129 | 1.2.3.1.4 | Solution Option Selected | milestone | 0d | 2001-01-18 | 2001-01-18 | 128 |  |  | 13d |  |  | Solution assessment report |  |
| 130 | 1.2.3.2 | **ARCHITECTURE AND DESIGN** |  | 5d? | 2001-01-19 | 2001-01-25 | 125 |  |  | 13d | 0d |  |  |  |
| 131 | 1.2.3.2.1 | Create Solution Architecture Document (SAD) for the selected solution |  | 1d | 2001-01-19 | 2001-01-19 |  |  |  | 20d |  |  | SAD |  |
| 132 | 1.2.3.2.2 | Create Application Design Document (ADD) for the selected solution |  | 1d | 2001-01-25 | 2001-01-25 |  |  |  | 16d |  |  | ADD |  |
| 133 | 1.2.3.2.3 | Create Infrastructure Design Document (IDD) for the selected solution |  | 1d | 2001-01-19 | 2001-01-19 |  |  |  | 20d |  |  | IDD |  |
| 134 | 1.2.3.2.4 | Create Data Design Document (DDD) for the selected solution |  | 1d | 2001-01-19 | 2001-01-19 |  |  |  | 20d |  |  | DDD |  |
| 135 | 1.2.3.2.5 | Create Service Design Document (if applicable) for the selected solution |  | 1d | 2001-01-19 | 2001-01-19 |  |  |  | 20d | 0d |  | SDD |  |
| 136 | 1.2.3.2.6 | Update Requirements Traceability Matrix |  | 1d? | 2001-01-19 | 2001-01-19 |  |  |  | 20d |  | UnAssigned |  |  |
| 137 | 1.2.3.2.7 | Review Design |  | 1d? | 2001-01-19 | 2001-01-19 |  |  |  | 13d | 0d |  |  | 91833;P;PT |
| 138 | 1.2.3.2.8 | Rework Design |  | 1d? | 2001-01-22 | 2001-01-22 | 137 |  |  | 13d | 0d |  |  | 91833;P;PT |
| 139 | 1.2.3.2.9 | Review and Sign-off of Design from TMS |  | 1d? | 2001-01-23 | 2001-01-23 | 138 |  |  | 18d |  |  |  | 91833;P;PT |
| 140 | 1.2.3.2.10 | Architecture and Design Deliverables complete for Inception | milestone | 0d | 2001-01-19 | 2001-01-19 | 135 |  |  | 20d |  |  |  |  |

Notes:
- 109: Text3: [34]UID=AJ!./K`;A\```8<*%O$`!```?P```0[16]PUN=P00004323005[8]TUID=101[35]PUID=AJA[7M`;%_```0/]G"$`!```?P```0
- 110: Text3: [34]UID=AJY1X7`;=\```8<*%O$`!```?P```0[16]PUN=P00004323005[8]TUID=102[35]PUID=AJA[7M`;%_```0/]G"$`!```?P```0
- 111: Text3: [34]UID=AJ&4A6`+9\```8<*%O$`!```?P```0[16]PUN=P00004323005[8]TUID=103[35]PUID=AJA[7M`;%_```0/]G"$`!```?P```0
- 118: Test strategy to include the scope items , environment , assumptions etc called out for the applicable ones below / ·System/Functional testing / ·Performance Testing / ·System Integration Testing (End to end integration across interfacing applications) / ·Regression Testing

| ID | WBS | Task | Type | Duration | Start | Finish | Predecessors | Complete | Remaining | Total slack | Free slack | Text1 | Text30 | TMS Deliverables |
| --- | --- | --- | --- | --- | --- | --- | --- | --- | --- | --- | --- | --- | --- | --- |
| 141 | 1.2.3.3 | **Test Design** |  | 8d? | 2001-01-01 A | 2001-01-10 |  | 36% | 5.09d? | 27d |  | UnAssigned | 91833;P;PT |  |
| 142 | 1.2.3.3.1 | **Create System and Performance Test Cases or Scripts** |  | 4d? | 2001-01-05 | 2001-01-10 |  |  |  | 7d |  |  | 91833;P;PT |  |
| 143 | 1.2.3.3.1.1 | Create System and Performance Test Cases or Scripts |  | 1d? | 2001-01-05 | 2001-01-05 | 122 |  |  | 7d | 0d |  | 91833;P;PT |  |
| 144 | 1.2.3.3.1.2 | Review System and Performance Test Cases or Scripts |  | 1d? | 2001-01-08 | 2001-01-08 | 143 |  |  | 7d | 0d |  | 91833;P;PT |  |
| 145 | 1.2.3.3.1.3 | Rework System and Performance Test Cases or Scripts |  | 1d? | 2001-01-09 | 2001-01-09 | 144 |  |  | 7d | 0d |  | 91833;P;PT |  |
| 146 | 1.2.3.3.1.4 | Signoff System and Performance Test Cases or Scripts |  | 1d? | 2001-01-10 | 2001-01-10 | 145 |  |  | 7d | 0d |  | 91833;P;PT | System Test cases, Performance Test scripts |
| 147 | 1.2.3.3.2 | **Create System Integration and Regression Test Cases** |  | 7d? | 2001-01-01 A | 2001-01-09 |  | 50% | 3.5d? | 22d |  |  | 91833;P;PT |  |
| 148 | 1.2.3.3.2.1 | Create System Integration Test Scenarios |  | 1d? | 2001-01-01 A | 2001-01-01 A |  | 100% |  |  |  |  | 91833;P;PT |  |
| 149 | 1.2.3.3.2.2 | Create System Integration Test Cases |  | 1d? | 2001-01-04 A | 2001-01-04 A | 121 | 100% |  |  |  |  | 91833;P;PT |  |
| 150 | 1.2.3.3.2.3 | Create Regression Test Cases for System Integration Testing |  | 1d? | 2001-01-04 A | 2001-01-04 A | 121 | 100% |  |  |  |  | 91833;P;PT |  |
| 151 | 1.2.3.3.2.4 | Review System Integration and Regression Test Cases |  | 1d? | 2001-01-05 | 2001-01-05 | 149, 150 |  |  | 22d | 0d |  | 91833;P;PT |  |
| 152 | 1.2.3.3.2.5 | Rework System Integration and Regression Test Cases |  | 1d? | 2001-01-08 | 2001-01-08 | 151 |  |  | 22d | 0d |  | 91833;P;PT |  |
| 153 | 1.2.3.3.2.6 | Signoff System Integration and Regression Test Cases from TMS |  | 1d? | 2001-01-09 | 2001-01-09 | 152 |  |  | 22d | 1d |  | 91833;P;PT | SIT cases & RT cases |
| 154 | 1.2.3.3.3 | Update Requirements Traceability Matrix |  | 1d? | 2001-01-01 A | 2001-01-01 A |  | 100% |  |  |  | UnAssigned |  | RTM - Elaboration phase |
| 155 | 1.2.3.3.4 | Completion of Test design | milestone | 0d | 2001-01-10 | 2001-01-10 | 146, 153 |  |  | 27d |  | UnAssigned | 91833;P;PT |  |
| 156 | 1.2.4 | **Phase End Review** |  | 1d? | 2001-01-01 A | 2001-01-01 |  | 50% | 0.5d? | 34d |  |  |  |  |
| 157 | 1.2.4.1 | Obtain approval from relevant stakeholder groups (EA/ES/Ops/SOX/DR, etc.) |  | 1d? | 2001-01-01 | 2001-01-01 |  |  |  | 34d |  |  |  | Phase end checklist activities |
| 158 | 1.2.4.2 | TMS phase end review and sign off |  | 1d? | 2001-01-01 A | 2001-01-01 A |  | 100% |  |  |  |  |  | Phase End Checklist Sign off |
| 159 | 1.2.5 | Completion of Elaboration Phase | milestone | 0d | 2001-01-01 A | 2001-01-01 A |  | 100% |  |  |  |  |  |  |
| 160 | 1.3 | **Construction Phase** |  | 15d? | 2001-01-19 | 2001-02-08 | 130SS |  |  | 0d |  |  | 91833;P;PT |  |
| 161 | 1.3.1 | **Development** |  | 8d? | 2001-01-19 | 2001-01-30 |  |  |  | 0d |  | UnAssigned | 91833;P;PT |  |
| 162 | 1.3.1.1 | **Code Setup** |  | 1d? | 2001-01-19 | 2001-01-19 |  |  |  | 20d |  | UnAssigned | 91833;P;PT |  |
| 163 | 1.3.1.1.1 | ClearCase Branch & View Creation |  | 1d? | 2001-01-19 | 2001-01-19 |  |  |  | 20d |  | UnAssigned | 91833;P;PT |  |
| 164 | 1.3.1.1.2 | Application code setup in local VM |  | 1d? | 2001-01-19 | 2001-01-19 |  |  |  | 20d |  | UnAssigned | 91833;P;PT |  |
| 165 | 1.3.1.1.3 | Request Data Refresh(if applicable) |  | 1d? | 2001-01-19 | 2001-01-19 |  |  |  | 20d |  | UnAssigned | 91833;P;PT |  |
| 166 | 1.3.1.1.4 | Define coding standards |  | 1d? | 2001-01-19 | 2001-01-19 |  |  |  | 20d |  | UnAssigned | 91833;P;PT |  |

| ID | WBS | Task | Duration | Start | Finish | Predecessors | Total slack | Free slack | Text1 | Text30 | TMS Deliverables |
| --- | --- | --- | --- | --- | --- | --- | --- | --- | --- | --- | --- |
| 167 | 1.3.1.2 | **Module 1** | 8d? | 2001-01-19 | 2001-01-30 |  | 0d |  | UnAssigned | 91833;P;PT |  |
| 168 | 1.3.1.2.1 | **Develop Code** | 1d? | 2001-01-23 | 2001-01-23 |  | 13d |  |  | 91833;P;PT |  |
| 169 | 1.3.1.2.1.1 | Develop Code | 1d? | 2001-01-23 | 2001-01-23 | 138, 113 | 13d | 0d |  | 91833;P;PT |  |
| 170 | 1.3.1.2.2 | **Review Code** | 5d? | 2001-01-24 | 2001-01-30 | 169 | 13d |  | UnAssigned | 91833;P;PT |  |
| 171 | 1.3.1.2.2.1 | Automated Code Review - Sonar/Fxcop/ReviewAssistant | 1d? | 2001-01-24 | 2001-01-24 |  | 13d | 0d | UnAssigned | 91833;P;PT | Sonar/Fxcop report |
| 172 | 1.3.1.2.2.2 | W3C Standards review - Sortsite report | 1d? | 2001-01-25 | 2001-01-25 | 171 | 13d | 0d | UnAssigned | 91833;P;PT | Sortsite report |
| 173 | 1.3.1.2.2.3 | Security Standards Review - Veracode Static Scan | 1d? | 2001-01-26 | 2001-01-26 | 172 | 13d | 0d | UnAssigned | 91833;P;PT | Veracode static scan report |
| 174 | 1.3.1.2.2.4 | Functional Code Review - Peer/Lead/External | 1d? | 2001-01-29 | 2001-01-29 | 173 | 14d |  |  | 91833;P;PT | Review Comments Tracker |
| 175 | 1.3.1.2.2.5 | Engage Single Owner SME | 1d? | 2001-01-29 | 2001-01-29 | 173 | 13d | 0d |  | 91833;P;PT | Review Comments Tracker |
| 176 | 1.3.1.2.2.6 | Rework Code | 1d? | 2001-01-30 | 2001-01-30 | 175 | 13d |  |  | 91833;P;PT |  |
| 177 | 1.3.1.2.3 | **Unit Test** | 5d? | 2001-01-19 | 2001-01-25 |  | 0d |  | UnAssigned | 91833;P;PT |  |
| 178 | 1.3.1.2.3.1 | **Create Automated Unit Test Scripts or Cases - Junit/VSTS** | 3d? | 2001-01-23 | 2001-01-25 |  | 16d |  |  | 91833;P;PT |  |
| 179 | 1.3.1.2.3.1.1 | Involve Single Owner SME in Unit test cases / results preparation / Test strategy | 1d? | 2001-01-23 | 2001-01-23 | 138 | 18d |  |  | 91833;P;PT |  |
| 180 | 1.3.1.2.3.1.2 | Create Automated Unit Test Scripts or Cases | 1d? | 2001-01-23 | 2001-01-23 | 138 | 16d | 0d |  | 91833;P;PT |  |
| 181 | 1.3.1.2.3.1.3 | Review Unit Test Scripts or Cases | 1d? | 2001-01-24 | 2001-01-24 | 180 | 16d | 0d |  | 91833;P;PT |  |
| 182 | 1.3.1.2.3.1.4 | Rework Unit Test Scripts or Cases | 1d? | 2001-01-25 | 2001-01-25 | 181 | 16d |  |  | 91833;P;PT |  |
| 183 | 1.3.1.2.3.2 | **Execution** | 1d? | 2001-01-19 | 2001-01-19 |  | 0d |  | UnAssigned | 91833;P;PT |  |
| 184 | 1.3.1.2.3.2.1 | Execute Unit Test Cases - Automated/Manual | 1d? | 2001-01-19 | 2001-01-19 |  | 20d |  | UnAssigned | 91833;P;PT |  |
| 185 | 1.3.1.2.3.2.2 | Track Unit Testing Defects to Closure | 1d? | 2001-01-19 | 2001-01-19 |  | 0d |  |  | 91833;P;PT |  |
| 186 | 1.3.1.2.3.2.3 | Create Unit Test Log/Report | 1d? | 2001-01-19 | 2001-01-19 |  | 20d |  | UnAssigned | 91833;P;PT | Junit report/UTR |
| 187 | 1.3.1.2.3.2.4 | Update RTM | 1d? | 2001-01-19 | 2001-01-19 |  | 20d |  | UnAssigned | 91833;P;PT | RTM - Development phase |
| 188 | 1.3.1.3 | **Build 1** | 5d? | 2001-01-19 | 2001-01-25 |  | 16d |  | UnAssigned | 91833;P;PT |  |
| 189 | 1.3.1.3.1 | **Code Merge and Deployment** | 4d? | 2001-01-19 | 2001-01-24 |  | 16d |  |  | 91833;P;PT |  |
| 190 | 1.3.1.3.1.1 | Perform Code merge for all CQs | 1d? | 2001-01-19 | 2001-01-19 |  | 16d | 0d |  | 91833;P;PT |  |
| 191 | 1.3.1.3.1.2 | Execute Automated Unit Test cases to ensure no code breakage | 1d? | 2001-01-22 | 2001-01-22 | 190 | 16d | 0d | UnAssigned | 91833;P;PT |  |
| 192 | 1.3.1.3.1.3 | Security Standards Review - Veracode Dynamic Scan | 1d? | 2001-01-23 | 2001-01-23 | 191 | 16d | 0d | UnAssigned | 91833;P;PT | Veracode Dynamic Scan report |
| 193 | 1.3.1.3.1.4 | Deploy the Code for Intergration and Regression testing | 1d? | 2001-01-24 | 2001-01-24 | 192 | 16d | 0d |  | 91833;P;PT |  |

Notes:
- 187: Ensure no requirements leakage from construction phase

| ID | WBS | Task | Type | Duration | Start | Finish | Predecessors | Total slack | Free slack | Text30 | TMS Deliverables | Text1 |
| --- | --- | --- | --- | --- | --- | --- | --- | --- | --- | --- | --- | --- |
| 194 | 1.3.1.3.2 | **Verify Code Completion** |  | 1d? | 2001-01-25 | 2001-01-25 |  | 16d |  | 91833;P;PT |  |  |
| 195 | 1.3.1.3.2.1 | Verify Code Completion |  | 1d? | 2001-01-25 | 2001-01-25 | 193 | 16d |  | 91833;P;PT |  |  |
| 196 | 1.3.1.4 | **Change Requests** |  | 1d? | 2001-01-19 | 2001-01-19 |  | 20d |  |  |  |  |
| 197 | 1.3.1.4.1 | Update CR Tracker |  | 1d? | 2001-01-19 | 2001-01-19 |  | 20d |  |  | CR Tracker |  |
| 198 | 1.3.1.4.2 | Approval and sign-off for each CR |  | 1d? | 2001-01-19 | 2001-01-19 |  | 20d |  |  |  |  |
| 199 | 1.3.1.4.3 | Execute CR |  | 1d? | 2001-01-19 | 2001-01-19 |  | 20d |  |  |  |  |
| 200 | 1.3.1.4.4 | Validate CR |  | 1d? | 2001-01-19 | 2001-01-19 |  | 20d |  |  |  |  |
| 201 | 1.3.2 | Completion of development |  | 1d? | 2001-01-19 | 2001-01-19 |  | 20d |  | 91833;P;PT |  | UnAssigned |
| 202 | 1.3.3 | **Validation** |  | 8d? | 2001-01-19 | 2001-01-30 |  | 0d |  | 91833;P;PT |  |  |
| 203 | 1.3.3.1 | **Build Management(Test/QA)** |  | 3d? | 2001-01-19 | 2001-01-23 |  | 0d |  | 91833;P;PT |  |  |
| 204 | 1.3.3.1.1 | Integrate and Validate Build |  | 1d? | 2001-01-19 | 2001-01-19 |  | 0d |  | 91833;P;PT |  |  |
| 205 | 1.3.3.1.2 | Build Handover - Updated design doc, UTR & Build Notes to be shared |  | 1d? | 2001-01-22 | 2001-01-22 | 204 | 18d | 0d | 91833;P;PT |  | UnAssigned |
| 206 | 1.3.3.1.3 | Perform Smoke Testing |  | 1d? | 2001-01-23 | 2001-01-23 | 146, 204, 205 | 18d |  | 91833;P;PT |  |  |
| 207 | 1.3.3.2 | **System\Functional Testing** |  | 4d? | 2001-01-19 | 2001-01-24 |  | 1d |  | 91833;P;PT |  |  |
| 208 | 1.3.3.2.1 | Setup System Test Environment |  | 1d? | 2001-01-19 | 2001-01-19 |  | 20d |  | 91833;P;PT |  |  |
| 209 | 1.3.3.2.2 | Execute System Test Cases |  | 1d? | 2001-01-22 | 2001-01-22 | 146, 185, 204 | 0d |  | 91833;P;PT |  |  |
| 210 | 1.3.3.2.3 | Track System Testing Defects to Closure |  | 1d? | 2001-01-23 | 2001-01-23 | 209 | 4d | 0d | 91833;P;PT |  |  |
| 211 | 1.3.3.2.4 | Prepare & Deliver System Test Summary Report | milestone | 1d? | 2001-01-24 | 2001-01-24 | 210 | 17d |  | 91833;P;PT | ST summary report, Defect tracker |  |
| 212 | 1.3.3.3 | **System Integration & Regression Testing** |  | 8d? | 2001-01-19 | 2001-01-30 |  | 13d |  | 91833;P;PT |  |  |
| 213 | 1.3.3.3.1 | Setup and Verify Test Data for System Integration Testing |  | 1d? | 2001-01-19 | 2001-01-19 | 153 | 15d | 2d | 91833;P;PT |  |  |
| 214 | 1.3.3.3.2 | Execute System Integration Test Cases |  | 1d? | 2001-01-24 | 2001-01-24 | 213, 153, 210 | 13d | 0d | 91833;P;PT |  |  |
| 215 | 1.3.3.3.3 | Engage Single Owner SME in SIT |  | 1d? | 2001-01-24 | 2001-01-24 | 153, 210 | 13d | 0d | 91833;P;PT |  |  |
| 216 | 1.3.3.3.4 | Track System Integration Testing Defects to Closure |  | 1d? | 2001-01-25 | 2001-01-25 | 215, 214 | 13d | 0d | 91833;P;PT | SIT report, Defect tracker |  |
| 217 | 1.3.3.3.5 | Execute Regression Test Cases |  | 1d? | 2001-01-26 | 2001-01-26 | 153, 216 | 13d | 0d | 91833;P;PT |  |  |
| 218 | 1.3.3.3.6 | Track Regression Defects to Closure |  | 1d? | 2001-01-29 | 2001-01-29 | 217 | 13d | 0d | 91833;P;PT | RT report, Defect tracker |  |
| 219 | 1.3.3.3.7 | Prepare & deliver System Integration and Regression Test Summary Report | milestone | 1d? | 2001-01-30 | 2001-01-30 | 215, 218, 214 | 13d |  | 91833;P;PT |  |  |

| ID | WBS | Task | Type | Duration | Start | Finish | Predecessors | Total slack | Text30 | Text1 | TMS Deliverables |
| --- | --- | --- | --- | --- | --- | --- | --- | --- | --- | --- | --- |
| 220 | 1.3.3.4 | **Performance Testing** |  | 5d? | 2001-01-19 | 2001-01-25 |  | 2d | 91833;P;PT |  |  |
| 221 | 1.3.3.4.1 | Setup Performance Test Environment |  | 1d? | 2001-01-19 | 2001-01-19 |  | 20d | 91833;P;PT |  |  |
| 222 | 1.3.3.4.2 | Execute Performance Test Cases or Scripts |  | 1d? | 2001-01-23 | 2001-01-23 | 146, 204, 209 | 0d | 91833;P;PT |  |  |
| 223 | 1.3.3.4.3 | Track Performance Testing Defects to Closure |  | 1d? | 2001-01-24 | 2001-01-24 | 222 | 0d | 91833;P;PT |  |  |
| 224 | 1.3.3.4.4 | Deliver Performance Test Report | milestone | 1d? | 2001-01-25 | 2001-01-25 | 223 | 0d | 91833;P;PT | UnAssigned | PT report, Defect tracker |
| 225 | 1.3.4 | Review & Sign off Integrated Test Summary Report with App SME |  | 1d? | 2001-01-26 | 2001-01-26 | 224 | 0d | 91833;P;PT | UnAssigned | Integrated test report |
| 226 | 1.3.5 | Completion of QA phase |  | 1d? | 2001-01-19 | 2001-01-19 |  | 20d | 91833;P;PT | UnAssigned |  |
| 227 | 1.3.6 | **User Acceptance Testing** |  | 8d? | 2001-01-29 | 2001-02-07 |  | 0d | 91833;P;PT | UnAssigned |  |
| 228 | 1.3.6.1 | **Build Management (User Acceptance)** |  | 5d? | 2001-01-29 | 2001-02-02 |  | 0d | 91833;P;PT |  |  |
| 229 | 1.3.6.1.1 | Integrate and Validate Build |  | 1d? | 2001-01-29 | 2001-01-29 | 225 | 0d | 91833;P;PT |  |  |
| 230 | 1.3.6.1.2 | Prepare User Acceptance Scenarios/Instructions |  | 1d? | 2001-02-01 | 2001-02-01 | 229, 231 | 0d | 91833;P;PT | UnAssigned |  |
| 231 | 1.3.6.1.3 | Prepare UAT Data & Validate UAT scenarios against the build |  | 1d? | 2001-01-31 | 2001-01-31 | 232 | 0d | 91833;P;PT | UnAssigned |  |
| 232 | 1.3.6.1.4 | Verify Delivery |  | 1d? | 2001-01-30 | 2001-01-30 | 210, 223, 229 | 0d | 91833;P;PT |  |  |
| 233 | 1.3.6.1.5 | Package and Deliver Application to Customer | milestone | 1d? | 2001-02-02 | 2001-02-02 | 230, 232 | 0d | 91833;P;PT |  | UAT instructions |
| 234 | 1.3.6.2 | **User Acceptance Testing <<move to Construction phase>>** |  | 3d? | 2001-02-05 | 2001-02-07 |  | 0d | 91833;P;PT |  |  |
| 235 | 1.3.6.2.1 | Support User Acceptance Testing |  | 1d? | 2001-02-05 | 2001-02-05 | 233 | 0d | 91833;P;PT |  |  |
| 236 | 1.3.6.2.2 | Track User Acceptance Testing Defects to Closure |  | 1d? | 2001-02-06 | 2001-02-06 | 235 | 0d | 91833;P;PT |  |  |
| 237 | 1.3.6.2.3 | Signoff on the UAT Completion | milestone | 1d? | 2001-02-07 | 2001-02-07 | 236 | 0d | 91833;P;PT |  | UAT report, Defect tracker |
| 238 | 1.3.7 | Completion of UAT phase |  | 1d? | 2001-02-08 | 2001-02-08 | 237 | 0d | 91833;P;PT | UnAssigned |  |
| 239 | 1.3.8 | **Phase End Review** |  | 1d? | 2001-01-19 | 2001-01-19 |  | 20d |  |  |  |
| 240 | 1.3.8.1 | Obtain approval from relevant stakeholder groups (EA/ES/Ops/SOX/DR, etc.) |  | 1d? | 2001-01-19 | 2001-01-19 |  | 20d |  |  | Phase end checklist activities |
| 241 | 1.3.8.2 | TMS phase end review and sign off |  | 1d? | 2001-01-19 | 2001-01-19 |  | 20d |  |  | Phase End Checklist Sign off |
| 242 | 1.3.9 | Completion of Construction Phase | milestone | 0d | 2001-01-19 | 2001-01-19 |  | 21d |  |  |  |
| 243 | 1.4 | **Transition Phase** |  | 35d? | 2001-01-01 | 2001-02-16 |  | 0d | 91833;P;PT | UnAssigned |  |
| 244 | 1.4.1 | **Training** |  | 1d? | 2001-01-01 | 2001-01-01 |  | 34d | 91833;P;PT | UnAssigned |  |
| 245 | 1.4.1.1 | Training Material preparation - HTML |  | 1d? | 2001-01-01 | 2001-01-01 |  | 34d | 91833;P;PT | UnAssigned | HTML training kit |
| 246 | 1.4.1.2 | Training videos preparation |  | 1d? | 2001-01-01 | 2001-01-01 |  | 34d | 91833;P;PT | UnAssigned | Training videos |
| 247 | 1.4.1.3 | Deck preparation for classroom training |  | 1d? | 2001-01-01 | 2001-01-01 |  | 34d | 91833;P;PT | UnAssigned | Training deck |
| 248 | 1.4.1.4 | Conduct Class room sessions |  | 1d? | 2001-01-01 | 2001-01-01 |  | 34d | 91833;P;PT | UnAssigned |  |
| 249 | 1.4.1.5 | Review & Rework training materials |  | 1d? | 2001-01-01 | 2001-01-01 |  | 34d | 91833;P;PT | UnAssigned |  |
| 250 | 1.4.1.6 | Sign off training materials |  | 1d? | 2001-01-01 | 2001-01-01 |  | 34d | 91833;P;PT | UnAssigned |  |

Notes:
- 225: Test Summary Report of all testing in-scope activities / ·System/Functional testing / ·System Integration Testing / ·Regression testing - Manual/Automated / ·Performance Testing / ·Defect Tracker - CQ

| ID | WBS | Task | Type | Duration | Start | Finish | Predecessors | Total slack | Text30 | TMS Deliverables | Text1 |
| --- | --- | --- | --- | --- | --- | --- | --- | --- | --- | --- | --- |
| 251 | 1.4.2 | **Rollout** |  | 35d? | 2001-01-01 | 2001-02-16 |  | 0d | 91833;P;PT |  |  |
| 252 | 1.4.2.1 | **Prepare Production Rollout Plan** |  | 3d? | 2001-02-09 | 2001-02-13 |  | 0d | 91833;P;PT |  |  |
| 253 | 1.4.2.1.1 | Prepare Production Rollout Plan |  | 1d? | 2001-02-09 | 2001-02-09 | 233, 238 | 0d | 91833;P;PT | Rollout plan |  |
| 254 | 1.4.2.1.2 | Prepare Production Rollback Plan |  | 1d? | 2001-02-12 | 2001-02-12 | 253 | 0d | 91833;P;PT | Rollback plan |  |
| 255 | 1.4.2.1.3 | Create deployment CQ's, Notify Stakeholders |  | 1d? | 2001-02-13 | 2001-02-13 | 254 | 0d | 91833;P;PT |  | UnAssigned |
| 256 | 1.4.2.2 | **Perform Production Rollout** |  | 3d? | 2001-02-14 | 2001-02-16 |  | 0d | 91833;P;PT |  |  |
| 257 | 1.4.2.2.1 | Perform Production Rollout |  | 1d? | 2001-02-15 | 2001-02-15 | 260 | 0d | 91833;P;PT |  |  |
| 258 | 1.4.2.2.2 | Validate deployment & Send roll out notification |  | 1d? | 2001-02-16 | 2001-02-16 | 257 | 0d | 91833;P;PT |  | UnAssigned |
| 259 | 1.4.2.2.3 | Completion of project deployment | milestone | 0d | 2001-02-16 | 2001-02-16 | 258 | 0d | 91833;P;PT |  | UnAssigned |
| 260 | 1.4.2.2.4 | Signoff Production Release |  | 1d? | 2001-02-14 | 2001-02-14 | 237, 255 | 0d | 91833;P;PT |  |  |
| 261 | 1.4.2.3 | **Post Implementation Support** |  | 1d? | 2001-01-01 | 2001-01-01 |  | 34d | 91833;P;PT |  |  |
| 262 | 1.4.2.3.1 | Track Post Production Defects to Closure until Warranty |  | 1d? | 2001-01-01 | 2001-01-01 |  | 34d | 91833;P;PT | Defect tracker |  |
| 263 | 1.4.2.4 | **Warranty Closure & Project Transition to AMS Team** |  | 1d? | 2001-01-01 | 2001-01-01 |  | 34d | 91833;P;PT |  | UnAssigned |
| 264 | 1.4.2.4.1 | Create a transition plan |  | 1d? | 2001-01-01 | 2001-01-01 |  | 34d | 91833;P;PT | Transition plan | UnAssigned |
| 265 | 1.4.2.4.2 | All deliverables are checked in clearcase & transitioned to AMS team |  | 1d? | 2001-01-01 | 2001-01-01 |  | 34d | 91833;P;PT | Deliverables checklist | UnAssigned |
| 266 | 1.4.2.4.3 | Conduct KT sessions & play back session |  | 1d? | 2001-01-01 | 2001-01-01 |  | 34d | 91833;P;PT |  | UnAssigned |
| 267 | 1.4.3 | Completion of deployment | milestone | 0d | 2001-01-01 | 2001-01-01 |  | 35d | 91833;P;PT |  | UnAssigned |
| 268 | 1.4.4 | **Project Closure** |  | 1d? | 2001-01-01 | 2001-01-01 |  | 34d | 91833;P;PT |  |  |
| 269 | 1.4.4.1 | Conduct Closure Audit |  | 1d? | 2001-01-01 | 2001-01-01 |  | 34d | 91833;P;PT |  |  |
| 270 | 1.4.4.2 | Conduct Retrospection |  | 1d? | 2001-01-01 | 2001-01-01 |  | 34d | 91833;P;PT |  |  |
| 271 | 1.4.4.3 | Ensure all milestones are invoiced in ESA |  | 1d? | 2001-01-01 | 2001-01-01 |  | 34d | 91833;P;PT |  | UnAssigned |
| 272 | 1.4.4.4 | Release resources in ESA including proxy, PM |  | 1d? | 2001-01-01 | 2001-01-01 |  | 34d | 91833;P;PT |  | UnAssigned |
| 273 | 1.4.4.5 | Notify Project Admins for Project Closure |  | 1d? | 2001-01-01 | 2001-01-01 |  | 34d | 91833;P;PT |  | UnAssigned |
| 274 | 1.4.5 | **Phase End Review** |  | 1d? | 2001-01-01 | 2001-01-01 |  | 34d |  |  |  |
| 275 | 1.4.5.1 | Obtain approval from relevant stakeholder groups (EA/ES/Ops/SOX/DR, etc.) |  | 1d? | 2001-01-01 | 2001-01-01 |  | 34d |  | Phase end checklist activities |  |
| 276 | 1.4.5.2 | TMS phase end review and sign off |  | 1d? | 2001-01-01 | 2001-01-01 |  | 34d |  | Phase End Checklist Sign off |  |
| 277 | 1.5 | Completion of Transition Phase | milestone | 0d | 2001-01-01 | 2001-01-01 |  | 35d | 91833;P;PT |  | UnAssigned |

| ID | WBS | Task | Duration | Start | Finish | Predecessors | Total slack | Free slack | Text30 | Text1 | TMS Deliverables |
| --- | --- | --- | --- | --- | --- | --- | --- | --- | --- | --- | --- |
| 278 | 1.6 | **Project Tracking** | 9d? | 2001-01-01 | 2001-01-11 |  | 26d |  | 91833;P;PT |  |  |
| 279 | 1.6.1 | **Project Monitoring & Control** | 9d? | 2001-01-01 | 2001-01-11 |  | 26d |  | 91833;P;PT | UnAssigned |  |
| 280 | 1.6.1.1 | Facilitation of Project | 1d? | 2001-01-10 | 2001-01-10 | 16, 29SS | 26d | 0d | 91833;P;PT |  |  |
| 281 | 1.6.1.2 | Track Project Status | 1d? | 2001-01-01 | 2001-01-01 |  | 34d |  | 91833;P;PT | UnAssigned |  |
| 282 | 1.6.1.3 | Change control & monitoring | 1d? | 2001-01-01 | 2001-01-01 |  | 34d |  | 91833;P;PT | UnAssigned |  |
| 283 | 1.6.1.4 | Update Project Plan | 1d? | 2001-01-03 | 2001-01-03 | 48, 37 | 30d | 0d | 91833;P;PT |  |  |
| 284 | 1.6.1.5 | Conduct Audit | 1d? | 2001-01-11 | 2001-01-11 | 280SS, 68 | 26d |  | 91833;P;PT |  |  |
| 285 | 1.6.1.6 | Conduct Monthly check point meeting with TMS PMO | 1d? | 2001-01-01 | 2001-01-01 |  | 34d |  | 91833;P;PT | UnAssigned | PMR report |
| 286 | 1.6.1.7 | Identify & track risks (RAID log) | 1d? | 2001-01-01 | 2001-01-01 |  | 34d |  | 91833;P;PT | UnAssigned | Risk Tracker, RAID log |
| 287 | 1.6.1.8 | Review project allocations in ESA | 1d? | 2001-01-01 | 2001-01-01 |  | 34d |  | 91833;P;PT | UnAssigned |  |
| 288 | 1.6.1.9 | Review project cost | 1d? | 2001-01-01 | 2001-01-01 |  | 34d |  | 91833;P;PT | UnAssigned |  |
| 289 | 1.6.1.10 | Review & Submit monthly revenue & CP | 1d? | 2001-01-01 | 2001-01-01 |  | 34d |  | 91833;P;PT | UnAssigned |  |
| 290 | 1.6.1.11 | Invoice completed Milestones | 1d? | 2001-01-01 | 2001-01-01 |  | 34d |  | 91833;P;PT | UnAssigned |  |
| 291 | 1.6.2 | **Project Analysis and Reporting** | 5d? | 2001-01-01 | 2001-01-05 |  | 30d |  | 91833;P;PT | UnAssigned |  |
| 292 | 1.6.2.1 | Prepare Project Status Report | 1d? | 2001-01-03 | 2001-01-03 | 283SS | 30d | 0d | 91833;P;PT |  | WSR |
| 293 | 1.6.2.2 | Review Project Status with stakeholders | 1d? | 2001-01-04 | 2001-01-04 | 292 | 30d | 0d | 91833;P;PT |  |  |
| 294 | 1.6.2.3 | Perform Causal Analysis and Resolution | 1d? | 2001-01-05 | 2001-01-05 | 292, 293, 39, 283SS, 38 | 30d |  | 91833;P;PT |  |  |
| 295 | 1.6.2.4 | Release metrics finalization | 1d? | 2001-01-01 | 2001-01-01 |  | 34d |  | 91833;P;PT |  |  |
| 296 | 1.6.2.5 | Lessons learnt | 1d? | 2001-01-01 | 2001-01-01 |  | 34d |  | 91833;P;PT |  |  |

Notes:
- 288: ·Hardware, Software RAMS cost / ·T&E cost / ·Compensation & Benefits / Span / Yearly promotions
